# assignment

Schedule from MS Project, 2025-05-06 to 2025-08-12, 7 hours a day, costs in €.

## Calendars

- Standard: Mon-Fri 08:00-12:00, 13:00-17:00; Sat-Sun off. Exceptions (off unless hours are given): 2025-06-02 (June Bank Holiday), 2025-08-04 (August Bank Holiday).

## Resources

| Resource | Group | Rate |
| --- | --- | --- |
| Project Manager | Management | 65 |
| Business Analyst | Management | 50 |
| Financial Analyst | Management | 55 |
| System Architect | Design Team | 60 |
| Technical Writer | Design Team | 40 |
| Software Developers | Development | 55 |
| Hardware Engineer | Development | 50 |
| IT Specialist | Development | 45 |
| QA Engineers | Testing Team | 50 |
| Deployment Specialist | Implementation | 48 |
| Trainer | Implementation | 42 |
| IT Support Engineer | Documentation | 42 |
| Procurement Officer | Development | 45 |

## Schedule

| ID | WBS | Task | Type | Duration | Start | Finish | Predecessors | Total slack | Resources | Work | Cost |
| --- | --- | --- | --- | --- | --- | --- | --- | --- | --- | --- | --- |
| 1 | 1 | **Planning Phase** |  | 9d | 2025-05-06 | 2025-05-15 |  | 0d |  | 105h | 6,055 |
| 2 | 1.1 | Define Project Objectives |  | 1d | 2025-05-06 | 2025-05-06 |  | 0d | Business Analyst; Project Manager | 14h | 805 |
| 3 | 1.2 | Identify Stakeholders and Requirements |  | 3d | 2025-05-06 | 2025-05-08 | 2FS-1d | 0d | Business Analyst; Project Manager | 42h | 2,415 |
| 4 | 1.3 | Feasibility Analysis |  | 2d | 2025-05-09 | 2025-05-13 | 3FS+1d | 0d | Business Analyst; Financial Analyst | 28h | 1,470 |
| 5 | 1.4 | Develop Project Plan and Schedule |  | 3d | 2025-05-13 | 2025-05-15 | 4 | 0d | Project Manager | 21h | 1,365 |
| 6 | 1.5 | Project approved | milestone | 0d | 2025-05-15 | 2025-05-15 | 5 | 0d | Project Manager |  |  |
| 7 | 2 | **System Design Phase** |  | 14d | 2025-05-15 | 2025-06-04 |  | 0d |  | 175h | 9,625 |
| 8 | 2.1 | High-Level System Design |  | 5d | 2025-05-15 | 2025-05-22 | 6 | 0d | System Architect | 35h | 2,100 |
| 9 | 2.2 | Detailed Technical Design |  | 7d | 2025-05-21 | 2025-05-29 | 8FS-1d | 0d | System Architect; Technical Writer | 98h | 4,900 |
| 10 | 2.3 | Review and Approval of Design |  | 3d | 2025-05-29 | 2025-06-04 | 9 | 0d | Project Manager; System Architect | 42h | 2,625 |
| 11 | 2.4 | System Design complete | milestone | 0d | 2025-06-04 | 2025-06-04 | 10 | 0d | System Architect |  |  |
| 12 | 3 | **Hardware and Software Acquisition Phase** |  | 13d | 2025-06-04 | 2025-06-19 |  | 0d |  | 105h | 4,830 |
| 13 | 3.1 | Identify Hardware and Software Specification |  | 3d | 2025-06-04 | 2025-06-06 | 11 | 0d | Hardware Engineer; IT Specialist | 42h | 1,995 |
| 14 | 3.2 | Research and Select Vendors |  | 4d | 2025-06-06 | 2025-06-12 | 13 | 0d | Procurement Officer | 28h | 1,260 |
| 15 | 3.3 | Procurement Process |  | 5d | 2025-06-13 | 2025-06-19 | 14FS+1d | 0d | Procurement Officer | 35h | 1,575 |
| 16 | 3.4 | Hardware and Software Aquired | milestone | 0d | 2025-06-19 | 2025-06-19 | 15 | 0d |  |  |  |
| 17 | 4 | **System Development and Configuration Phase** |  | 18d | 2025-06-19 | 2025-07-11 |  | 0d |  | 147h | 7,805 |
| 18 | 4.1 | Setup and Configure Hardware |  | 5d | 2025-06-19 | 2025-06-25 | 16 | 0d | Hardware Engineer | 35h | 1,750 |
| 19 | 4.2 | Install and Configure Software |  | 6d | 2025-06-24 | 2025-07-01 | 18FS-2d | 0d | Software Developers | 42h | 2,310 |
| 20 | 4.3 | Develop Custom Software Components |  | 7d | 2025-07-01 | 2025-07-09 | 19 | 0d | Software Developers | 49h | 2,695 |
| 21 | 4.4 | Initial System Testing |  | 3d | 2025-07-08 | 2025-07-11 | 20FS-1d | 0d | QA Engineers | 21h | 1,050 |
| 22 | 4.5 | System Setup | milestone | 0d | 2025-07-11 | 2025-07-11 | 21 | 0d | IT Specialist |  |  |
| 23 | 5 | **Integration and Testing Phase** |  | 9.5d | 2025-07-11 | 2025-07-23 |  | 0d |  | 84h | 4,270 |
| 24 | 5.1 | Integrate Hardware and Software Componets |  | 2d | 2025-07-11 | 2025-07-14 | 22 | 0d | Hardware Engineer; Software Developers | 28h | 1,470 |
| 25 | 5.2 | System Testing and Debugging |  | 5d | 2025-07-15 | 2025-07-22 | 24FS+1d | 0d | QA Engineers | 35h | 1,750 |
| 26 | 5.3 | User Acceptance Testing |  | 1.5d | 2025-07-22 | 2025-07-23 | 25 | 0d | QA Engineers; Business Analyst | 21h | 1,050 |
| 27 | 5.4 | Testing Complete | milestone | 0d | 2025-07-23 | 2025-07-23 | 26 | 0d | QA Engineers |  |  |

| ID | WBS | Task | Type | Duration | Start | Finish | Predecessors | Total slack | Resources | Work | Cost |
| --- | --- | --- | --- | --- | --- | --- | --- | --- | --- | --- | --- |
| 28 | 6 | **Deployment Phase** |  | 7d | 2025-07-23 | 2025-07-31 |  | 0d |  | 70h | 3,388 |
| 29 | 6.1 | Develop Deployment Plan |  | 2d | 2025-07-23 | 2025-07-25 | 27 | 0d | Deployment Specialist | 14h | 672 |
| 30 | 6.2 | System Deployment and Setup |  | 4d | 2025-07-24 | 2025-07-29 | 29FS-1d | 0d | Deployment Specialist | 28h | 1,344 |
| 31 | 6.3 | Final Testing and Validation |  | 2d | 2025-07-29 | 2025-07-31 | 30 | 0d | Deployment Specialist; QA Engineers | 28h | 1,372 |
| 32 | 7 | **Training and Documentation Phase** |  | 10d | 2025-07-29 | 2025-08-12 |  | 0d |  | 84h | 3,444 |
| 33 | 7.1 | Develop User Documentation |  | 4d | 2025-07-29 | 2025-08-05 | 31FS-2d | 0d | Technical Writer | 28h | 1,120 |
| 34 | 7.2 | Conduct User Training Sessions |  | 4d | 2025-08-05 | 2025-08-08 | 33 | 0d | Trainer | 28h | 1,176 |
| 35 | 7.3 | Provide Technical Support Guidelines |  | 2d | 2025-08-08 | 2025-08-12 | 34 | 0d | IT Support Engineer; Technical Writer | 28h | 1,148 |
| 36 | 7.4 | Project Complete | milestone | 0d | 2025-08-12 | 2025-08-12 | 35 | 0d | Project Manager |  |  |
