# assignment

Schedule from MS Project, 2025-05-06 to 2025-08-01, status date 2025-06-02, 7 hours a day, costs in €, A marks actual dates.

## Calendars

- Standard: Mon-Fri 08:00-12:00, 13:00-17:00; Sat-Sun off. Exceptions (off unless hours are given): 2025-06-02 (June Bank Holiday).

## Resources

| Resource | Group | Rate |
| --- | --- | --- |
| Project Manager | Management | 65 |
| Business Analyst | Management | 50 |
| Financial Analyst | Management | 55 |
| System Architect | Design Team | 60 |
| Technical Writer | Design Team | 40 |
| Software Developers | Development | 55 |
| Hardware Engineer | Development | 50 |
| IT Specialist | Development | 45 |
| QA Engineers | Testing Team | 50 |
| Deployment Specialist | Implementation | 48 |
| Trainer | Implementation | 42 |
| IT Support Engineer | Documentation | 42 |
| Procurement Officer | Development | 45 |

## Schedule

| ID | WBS | Task | Type | Duration | Start | Finish | Predecessors | Complete | Remaining | Baseline start | Baseline finish | Baseline duration | Total slack | Free slack | Resources | Work | Actual work | Cost | Baseline cost | Actual cost |
| --- | --- | --- | --- | --- | --- | --- | --- | --- | --- | --- | --- | --- | --- | --- | --- | --- | --- | --- | --- | --- |
| 1 | 1 | **Planning Phase** |  | 10d | 2025-05-06 A | 2025-05-16 A |  | 100% |  | 2025-05-06 | 2025-05-16 | 10d |  |  |  | 105h | 105h | 6,160 | 6,160 | 6,160 |
| 2 | 1.1 | Define Project Objectives |  | 2d | 2025-05-06 A | 2025-05-07 A |  | 100% |  | 2025-05-06 | 2025-05-07 | 2d |  |  | Project Manager | 14h | 14h | 910 | 910 | 910 |
| 3 | 1.2 | Identify Stakeholders and Requirements |  | 3d | 2025-05-06 A | 2025-05-09 A | 2FS-1d | 100% |  | 2025-05-06 | 2025-05-09 | 3d |  |  | Business Analyst; Project Manager | 42h | 42h | 2,415 | 2,415 | 2,415 |
| 4 | 1.3 | Feasibility Analysis |  | 2d | 2025-05-12 A | 2025-05-14 A | 3FS+1d | 100% |  | 2025-05-12 | 2025-05-14 | 2d |  |  | Business Analyst; Financial Analyst | 28h | 28h | 1,470 | 1,470 | 1,470 |
| 5 | 1.4 | Develop Project Plan and Schedule |  | 3d | 2025-05-14 A | 2025-05-16 A | 4 | 100% |  | 2025-05-14 | 2025-05-16 | 3d |  |  | Project Manager | 21h | 21h | 1,365 | 1,365 | 1,365 |
| 6 | 1.5 | Project approved | milestone | 0d | 2025-05-16 A | 2025-05-16 A | 5 | 100% |  | 2025-05-16 | 2025-05-16 | 0d |  |  | Project Manager |  |  |  |  |  |
| 7 | 2 | **System Design Phase** |  | 14d | 2025-05-16 A | 2025-06-04 A |  | 100% |  | 2025-05-16 | 2025-06-04 | 14d |  |  |  | 126h | 126h | 6,685 | 6,685 | 6,685 |
| 8 | 2.1 | High-Level System Design |  | 5d | 2025-05-16 A | 2025-05-23 A | 6 | 100% |  | 2025-05-16 | 2025-05-23 | 5d |  |  | System Architect | 35h | 35h | 2,100 | 2,100 | 2,100 |
| 9 | 2.2 | Detailed Technical Design |  | 7d | 2025-05-22 A | 2025-05-30 A | 8FS-1d | 100% |  | 2025-05-22 | 2025-05-30 | 7d |  |  | Technical Writer | 49h | 49h | 1,960 | 1,960 | 1,960 |
| 10 | 2.3 | Review and Approval of Design |  | 3d | 2025-05-30 A | 2025-06-04 A | 9 | 100% |  | 2025-05-30 | 2025-06-04 | 3d |  |  | Project Manager; System Architect | 42h | 42h | 2,625 | 2,625 | 2,625 |
| 11 | 2.4 | System Design complete | milestone | 0d | 2025-06-04 A | 2025-06-04 A | 10 | 100% |  | 2025-06-04 | 2025-06-04 | 0d |  |  | System Architect |  |  |  |  |  |
| 12 | 3 | **Hardware and Software Acquisition Phase** |  | 11d | 2025-06-05 A | 2025-06-18 |  | 90% | 1.1d | 2025-06-05 | 2025-06-18 | 11d | 36d |  |  | 91h | 84h | 4,200 | 4,200 | 3,885 |
| 13 | 3.1 | Identify Hardware and Software Specification |  | 3d | 2025-06-05 A | 2025-06-09 A | 11 | 100% |  | 2025-06-05 | 2025-06-09 | 3d |  |  | Hardware Engineer; IT Specialist | 42h | 42h | 1,995 | 1,995 | 1,995 |
| 14 | 3.2 | Research and Select Vendors |  | 2d | 2025-06-09 A | 2025-06-11 A | 13 | 100% |  | 2025-06-09 | 2025-06-11 | 2d |  |  | Procurement Officer | 14h | 14h | 630 | 630 | 630 |
| 15 | 3.3 | Procurement Process |  | 5d | 2025-06-12 A | 2025-06-18 | 14FS+1d | 80% | 1d | 2025-06-12 | 2025-06-18 | 5d | 36d | 0d | Procurement Officer | 35h | 28h | 1,575 | 1,575 | 1,260 |
| 16 | 3.4 | Hardware and Software Aquired | milestone | 0d | 2025-06-18 | 2025-06-18 | 15 |  |  | 2025-06-18 | 2025-06-18 | 0d | 36d |  | Project Manager |  |  |  |  |  |
| 17 | 4 | **System Development and Configuration Phase** |  | 14.5d | 2025-06-18 A | 2025-07-07 |  | 60% | 5.8d | 2025-06-18 | 2025-07-07 | 14.5d | 21.5d |  |  | 147h | 73.5h | 7,560 | 7,560 | 3,867.5 |
| 18 | 4.1 | Setup and Configure Hardware |  | 5d | 2025-06-18 A | 2025-06-24 A | 16 | 100% |  | 2025-06-18 | 2025-06-24 | 5d |  |  | Hardware Engineer | 35h | 35h | 1,750 | 1,750 | 1,750 |
| 19 | 4.2 | Install and Configure Software |  | 6d | 2025-06-23 A | 2025-06-30 | 18FS-2d | 92% | 0.5d | 2025-06-23 | 2025-06-30 | 6d | 21.5d | 0d | Software Developers | 42h | 38.5h | 2,310 | 2,310 | 2,117.5 |
| 20 | 4.3 | Develop Custom Software Components |  | 3.5d | 2025-06-30 | 2025-07-03 | 19 |  |  | 2025-06-30 | 2025-07-03 | 3.5d | 21.5d | 0d | Software Developers; IT Specialist | 49h |  | 2,450 | 2,450 |  |
| 21 | 4.4 | Initial System Testing |  | 3d | 2025-07-02 | 2025-07-07 | 20FS-1d |  |  | 2025-07-02 | 2025-07-07 | 3d | 21.5d | 0d | QA Engineers | 21h |  | 1,050 | 1,050 |  |
| 22 | 4.5 | System Setup | milestone | 0d | 2025-07-07 | 2025-07-07 | 21 |  |  | 2025-07-07 | 2025-07-07 | 0d | 21.5d |  | IT Specialist |  |  |  |  |  |
| 23 | 5 | **Integration and Testing Phase** |  | 7.5d | 2025-07-07 A | 2025-07-15 |  | 50% | 3.75d | 2025-07-07 | 2025-07-15 | 7.5d | 14d |  |  | 84h | 43.75h | 4,270 | 4,270 | 2,257.5 |
| 24 | 5.1 | Integrate Hardware and Software Componets |  | 2d | 2025-07-07 A | 2025-07-09 A | 22 | 100% |  | 2025-07-07 | 2025-07-09 | 2d |  |  | Hardware Engineer; Software Developers | 28h | 28h | 1,470 | 1,470 | 1,470 |
| 25 | 5.2 | System Testing and Debugging |  | 5d | 2025-07-08 A | 2025-07-14 | 24SS+1d | 45% | 2.75d | 2025-07-08 | 2025-07-14 | 5d | 14d | 0d | QA Engineers | 35h | 15.75h | 1,750 | 1,750 | 787.5 |
| 26 | 5.3 | User Acceptance Testing |  | 1.5d | 2025-07-14 | 2025-07-15 | 25 |  |  | 2025-07-14 | 2025-07-15 | 1.5d | 14d | 0d | QA Engineers; Business Analyst | 21h |  | 1,050 | 1,050 |  |
| 27 | 5.4 | Testing Complete | milestone | 0d | 2025-07-15 | 2025-07-15 | 26 |  |  | 2025-07-15 | 2025-07-15 | 0d | 14d |  | QA Engineers |  |  |  |  |  |

| ID | WBS | Task | Type | Duration | Start | Finish | Predecessors | Complete | Remaining | Baseline start | Baseline finish | Baseline duration | Total slack | Free slack | Resources | Work | Actual work | Cost | Baseline cost | Actual cost |
| --- | --- | --- | --- | --- | --- | --- | --- | --- | --- | --- | --- | --- | --- | --- | --- | --- | --- | --- | --- | --- |
| 28 | 6 | **Deployment Phase** |  | 6d | 2025-07-15 A | 2025-07-23 |  | 40% | 3.6d | 2025-07-15 | 2025-07-23 | 6d | 3d |  |  | 70h | 26.6h | 3,521 | 3,521 | 1,409.8 |
| 29 | 6.1 | Develop Deployment Plan |  | 1d | 2025-07-15 A | 2025-07-16 A | 27 | 100% |  | 2025-07-15 | 2025-07-16 | 1d |  |  | Business Analyst; Project Manager | 14h | 14h | 805 | 805 | 805 |
| 30 | 6.2 | System Deployment and Setup |  | 4d | 2025-07-15 A | 2025-07-21 | 29FS-1d | 45% | 2.2d | 2025-07-15 | 2025-07-21 | 4d | 3d | 0d | Deployment Specialist | 28h | 12.6h | 1,344 | 1,344 | 604.8 |
| 31 | 6.3 | Final Testing and Validation |  | 2d | 2025-07-21 | 2025-07-23 | 30 |  |  | 2025-07-21 | 2025-07-23 | 2d | 3d | 0d | Deployment Specialist; QA Engineers | 28h |  | 1,372 | 1,372 |  |
| 32 | 7 | **Training and Documentation Phase** |  | 10d | 2025-07-21 A | 2025-08-01 |  | 30% | 7d | 2025-07-21 | 2025-08-01 | 10d | 0d |  |  | 84h | 21h | 3,444 | 3,444 | 840 |
| 33 | 7.1 | Develop User Documentation |  | 4d | 2025-07-21 A | 2025-07-24 | 31FS-2d | 75% | 1d | 2025-07-21 | 2025-07-24 | 4d | 0d |  | Technical Writer | 28h | 21h | 1,120 | 1,120 | 840 |
| 34 | 7.2 | Conduct User Training Sessions |  | 4d | 2025-07-24 | 2025-07-30 | 33 |  |  | 2025-07-24 | 2025-07-30 | 4d | 0d |  | Trainer | 28h |  | 1,176 | 1,176 |  |
| 35 | 7.3 | Provide Technical Support Guidelines |  | 2d | 2025-07-30 | 2025-08-01 | 34 |  |  | 2025-07-30 | 2025-08-01 | 2d | 0d |  | IT Support Engineer; Technical Writer | 28h |  | 1,148 | 1,148 |  |
| 36 | 7.4 | Project Complete | milestone | 0d | 2025-08-01 | 2025-08-01 | 35 |  |  | 2025-08-01 | 2025-08-01 | 0d | 0d |  | Project Manager |  |  |  |  |  |
